# BizTalk SQL Server Migration - Minimal Downtime

Schedule from MS Project XML, 2026-05-04 to 2026-07-10.

## Calendars

- Standard: Mon-Fri 08:00-12:00, 13:00-17:00; Sat-Sun off.

## Schedule

| ID | WBS | Task | Type | Duration | Start | Finish | Predecessors | Work |
| --- | --- | --- | --- | --- | --- | --- | --- | --- |
| 1 | 1 | **1. Discover (Single SQL Server Topology)** |  | 42h | 2026-05-04 | 2026-05-11 |  | 42h |
| 2 | 1.1 | Kickoff and success criteria definition |  | 6h | 2026-05-04 | 2026-05-04 |  | 6h |
| 3 | 1.2 | Inventory BizTalk and SQL dependencies |  | 20h | 2026-05-05 | 2026-05-07 | 2 | 20h |
| 4 | 1.3 | Define downtime budget and rollback criteria |  | 10h | 2026-05-07 | 2026-05-08 | 3 | 10h |
| 5 | 1.4 | Approve migration strategy and governance gates |  | 6h | 2026-05-08 | 2026-05-08 | 4 | 6h |
| 6 | 2 | **2. Design** |  | 100h | 2026-05-11 | 2026-05-27 | 5 | 100h |
| 7 | 2.1 | Provision new SQL infrastructure |  | 24h | 2026-05-11 | 2026-05-13 | 5 | 24h |
| 8 | 2.2 | Configure SQL instance standards (collation, tempdb, maxdop, backup) |  | 20h | 2026-05-13 | 2026-05-15 | 7 | 20h |
| 9 | 2.3 | Implement security, logins, SPNs, and service account permissions |  | 24h | 2026-05-15 | 2026-05-19 | 8 | 24h |
| 10 | 2.4 | Baseline performance and health checks |  | 12h | 2026-05-19 | 2026-05-20 | 9 | 12h |
| 11 | 2.5 | Validate HA/DR posture and backup-restore test |  | 20h | 2026-05-21 | 2026-05-25 | 10 | 20h |
| 12 | 3 | **3. Build** |  | 128h | 2026-05-25 | 2026-06-15 | 11 | 128h |
| 13 | 3.1 | Clone lower environment and refresh BizTalk databases |  | 32h | 2026-05-25 | 2026-05-28 | 11 | 32h |
| 14 | 3.2 | Execute dry run 1: full rehearsal |  | 28h | 2026-05-28 | 2026-06-02 | 13 | 28h |
| 15 | 3.3 | Measure timings and bottlenecks |  | 12h | 2026-06-02 | 2026-06-03 | 14 | 12h |
| 16 | 3.4 | Optimize scripts and jobs to reduce cutover duration |  | 20h | 2026-06-04 | 2026-06-08 | 15 | 20h |
| 17 | 3.5 | Execute dry run 2 with stopwatch validation |  | 24h | 2026-06-08 | 2026-06-10 | 16 | 24h |
| 18 | 3.6 | Finalize production runbook and rollback scripts |  | 12h | 2026-06-11 | 2026-06-12 | 17 | 12h |
| 19 | 4 | **4. Test** |  | 58h | 2026-06-15 | 2026-06-24 | 18 | 58h |
| 20 | 4.1 | Submit and approve change records (CAB) |  | 10h | 2026-06-15 | 2026-06-16 | 18 | 10h |
| 21 | 4.2 | Business communication and outage notice |  | 6h | 2026-06-17 | 2026-06-17 | 20 | 6h |
| 22 | 4.3 | Freeze window and release preparation |  | 12h | 2026-06-18 | 2026-06-19 | 21 | 12h |
| 23 | 4.4 | Monitoring and alert routing updates |  | 10h | 2026-06-22 | 2026-06-23 | 22 | 10h |
| 24 | 4.5 | Pre-stage scripts, SQL Agent jobs, DNS aliases, and credentials |  | 20h | 2026-06-24 | 2026-06-26 | 23 | 20h |
| 25 | 4.6 | Go/No-Go decision meeting | milestone | 0d | 2026-06-26 | 2026-06-26 | 24 |  |

| ID | WBS | Task | Type | Duration | Start | Finish | Predecessors | Work |
| --- | --- | --- | --- | --- | --- | --- | --- | --- |
| 26 | 5 | **5. Cutover** |  | 22h | 2026-06-29 | 2026-07-01 | 25 | 22h |
| 27 | 5.1 | Start maintenance window and stop receive locations |  | 3h | 2026-06-29 | 2026-06-29 | 25 | 3h |
| 28 | 5.2 | Quiesce BizTalk processing and drain in-flight messages |  | 4h | 2026-06-29 | 2026-06-29 | 27 | 4h |
| 29 | 5.3 | Take final full and tail-log backups |  | 2h | 2026-06-30 | 2026-06-30 | 28 | 2h |
| 30 | 5.4 | Restore or attach BizTalk databases on new SQL and validate consistency |  | 5h | 2026-06-30 | 2026-07-01 | 29 | 5h |
| 31 | 5.5 | Run SampleUpdateInfo.xml (ConfigFramework) to repoint BizTalk SQL references |  | 3h | 2026-07-01 | 2026-07-01 | 30 | 3h |
| 32 | 5.6 | Start SQL Agent jobs and BizTalk host instances |  | 2h | 2026-07-01 | 2026-07-01 | 31 | 2h |
| 33 | 5.7 | Smoke tests and synthetic transaction validation |  | 3h | 2026-07-01 | 2026-07-01 | 32 | 3h |
| 34 | 5.8 | Business validation sign-off | milestone | 0d | 2026-07-01 | 2026-07-01 | 33 |  |
| 35 | 5.9 | End maintenance window | milestone | 0d | 2026-07-01 | 2026-07-01 | 34 |  |
| 36 | 6 | **6. Post-Cutover Stabilization** |  | 54h | 2026-07-02 | 2026-07-10 | 35 | 54h |
| 37 | 6.1 | Elevated monitoring and rapid incident triage |  | 32h | 2026-07-02 | 2026-07-07 | 35 | 32h |
| 38 | 6.2 | Performance tuning and index/statistics optimization |  | 12h | 2026-07-07 | 2026-07-08 | 37 | 12h |
| 39 | 6.3 | Final handover and closure report |  | 10h | 2026-07-08 | 2026-07-09 | 38 | 10h |
| 40 | 7 | **7. Optional BAM Workstream (If BAM Is Installed)** | inactive | 30h | 2026-05-11 | 2026-05-15 | 3 | 30h |
| 41 | 7.1 | Confirm BAM scope and dependent databases/packages | inactive | 6h | 2026-05-11 | 2026-05-11 | 3 | 6h |
| 42 | 7.2 | Execute BAM-specific backup/restore rehearsal | inactive | 16h | 2026-05-12 | 2026-05-14 | 41 | 16h |
| 43 | 7.3 | Perform BAM post-cutover validation | inactive | 8h | 2026-07-02 | 2026-07-03 | 35 | 8h |
