# BizTalk SQL Migration Scenario Comparison

Schedule from MS Project XML, 2026-05-04 to 2026-09-29.

## Calendars

- Standard: Mon-Fri 08:00-12:00, 13:00-17:00; Sat-Sun off.

## Schedule

| ID | WBS | Task | Type | Duration | Start | Predecessors |
| --- | --- | --- | --- | --- | --- | --- |
| 1 | 1 | **Scenario 1: Single SQL Server (MsgBox + DTA + Admin + BAM on one instance)** |  |  | 2026-05-04 |  |
| 2 | 1.1 | Discover and inventory current SQL artifacts (single-server target) |  | 3d | 2026-05-04 |  |
| 3 | 1.2 | Design move plan, SampleUpdateInfo.xml, and rollback path |  | 2d | 2026-05-07 | 2 |
| 4 | 1.3 | Build scripts and execute non-prod rehearsal |  | 5d | 2026-05-11 | 3 |
| 5 | 1.4 | CAB readiness, comms, and maintenance freeze prep |  | 2d | 2026-05-18 | 4 |
| 6 | 1.5 | Cutover window: stop services, backup/restore, config repoint, restart |  | 2d | 2026-05-20 | 5 |
| 7 | 1.6 | Post-cutover validation and hypercare |  | 3d | 2026-05-22 | 6 |
| 8 | 1.7 | Scenario 1 complete | milestone | 0d | 2026-05-27 | 7 |
| 9 | 2 | **Scenario 2: Two SQL Servers (SQL-A: Admin+BAM, SQL-B: MsgBox+DTA)** |  |  | 2026-06-15 |  |
| 10 | 2.1 | Discover inventory and map DB placement to SQL-A/SQL-B |  | 3d | 2026-06-15 |  |
| 11 | 2.2 | Design shared login/job package reused across both SQL servers |  | 2d | 2026-06-18 | 10 |
| 12 | 2.3 | Build and test shared automation artifacts (jobs/logins/update XML) |  | 3d | 2026-06-22 | 11 |
| 13 | 2.4 | Rehearsal with parallel restore streams on SQL-A and SQL-B |  | 4d | 2026-06-25 | 12 |
| 14 | 2.5 | CAB readiness and freeze prep |  | 2d | 2026-07-01 | 13 |
| 15 | 2.6 | Cutover: parallel DB restores + ConfigFramework XML repoint |  | 1.5d | 2026-07-03 | 14 |
| 16 | 2.7 | Post-cutover validation and hypercare |  | 3d | 2026-07-06 | 15 |
| 17 | 2.8 | Scenario 2 complete | milestone | 0d | 2026-07-09 | 16 |
| 18 | 3 | **Scenario 3: Three SQL Servers (SQL-A: MsgBox, SQL-B: DTA, SQL-C: Admin+BAM)** |  |  | 2026-07-27 |  |
| 19 | 3.1 | Discover inventory and role mapping for 3-server topology |  | 3d | 2026-07-27 |  |
| 20 | 3.2 | Design shared automation and cross-server restore lanes |  | 2d | 2026-07-30 | 19 |
| 21 | 3.3 | Build and validate reusable scripts (logins/jobs/update XML) |  | 3d | 2026-08-03 | 20 |
| 22 | 3.4 | Rehearsal with three-way parallel DB restore and verification |  | 3d | 2026-08-06 | 21 |
| 23 | 3.5 | CAB readiness and freeze prep |  | 2d | 2026-08-11 | 22 |
| 24 | 3.6 | Cutover: parallel restore on 3 SQL servers + ConfigFramework repoint |  | 1d | 2026-08-13 | 23 |
| 25 | 3.7 | Post-cutover validation and hypercare |  | 2d | 2026-08-14 | 24 |
| 26 | 3.8 | Scenario 3 complete | milestone | 0d | 2026-08-18 | 25 |

| ID | WBS | Task | Type | Duration | Start | Predecessors |
| --- | --- | --- | --- | --- | --- | --- |
| 27 | 4 | **Scenario 4: Four SQL Servers (SQL-A: MsgBox, SQL-B: DTA, SQL-C: Admin, SQL-D: BAM)** |  |  | 2026-09-07 |  |
| 28 | 4.1 | Discover inventory and role mapping for 4-server topology |  | 3d | 2026-09-07 |  |
| 29 | 4.2 | Design shared artifact set used by all four SQL servers |  | 2d | 2026-09-10 | 28 |
| 30 | 4.3 | Build and validate reusable scripts and config XML packages |  | 3d | 2026-09-14 | 29 |
| 31 | 4.4 | Rehearsal with four-way parallel restore and shared validation scripts |  | 3d | 2026-09-17 | 30 |
| 32 | 4.5 | CAB readiness and freeze prep |  | 2d | 2026-09-22 | 31 |
| 33 | 4.6 | Cutover: four-way parallel restore + ConfigFramework XML repoint |  | 1d | 2026-09-24 | 32 |
| 34 | 4.7 | Post-cutover validation and hypercare |  | 2d | 2026-09-25 | 33 |
| 35 | 4.8 | Scenario 4 complete | milestone | 0d | 2026-09-29 | 34 |
