# BizTalk SQL Migration Execution - 1 Server

Schedule from MS Project XML, 2026-05-04 to 2026-05-27.

## Calendars

- Standard: Mon-Fri 08:00-12:00, 13:00-17:00; Sat-Sun off.

## Schedule

| ID | WBS | Task | Type | Duration | Start | Finish | Predecessors | Work |
| --- | --- | --- | --- | --- | --- | --- | --- | --- |
| 1 | 1 | **Single SQL Server (MsgBox + DTA + Admin + BAM)** |  | 17d | 2026-05-04 | 2026-05-27 |  | 136h |
| 2 | 1.1 | Discover and inventory current SQL artifacts |  | 3d | 2026-05-04 | 2026-05-06 |  | 24h |
| 3 | 1.2 | Design move plan, update XML, and rollback path |  | 2d | 2026-05-07 | 2026-05-08 | 2 | 16h |
| 4 | 1.3 | Build scripts and execute non-prod rehearsal |  | 5d | 2026-05-11 | 2026-05-15 | 3 | 40h |
| 5 | 1.4 | CAB readiness, comms, and maintenance freeze prep |  | 2d | 2026-05-18 | 2026-05-19 | 4 | 16h |
| 6 | 1.5 | Cutover: stop services, restore DBs, repoint, restart |  | 2d | 2026-05-20 | 2026-05-21 | 5 | 16h |
| 7 | 1.6 | Post-cutover validation and hypercare |  | 3d | 2026-05-22 | 2026-05-26 | 6 | 24h |
| 8 | 1.7 | Execution complete | milestone | 0d | 2026-05-27 | 2026-05-27 | 7 |  |

Notes:
- 1: All BizTalk databases (BizTalkMgmtDb, BizTalkMsgBoxDb, BizTalkDTADb, BAMPrimaryImport, BAMArchive, BAMStarSchema, BAMAlertsApplication, BAMAlertsNSMain, BizTalkRuleEngineDb, SSODB) reside on a single SQL Server instance. All databases move together in one cutover window. Simplest topology — no cross-server coordination — but requires the longest single-instance maintenance window.
- 2: Catalog every BizTalk SQL database: BizTalkMgmtDb, BizTalkMsgBoxDb, BizTalkDTADb, BAMPrimaryImport, BAMArchive, BAMStarSchema, BAMAlertsApplication, BAMAlertsNSMain, BizTalkRuleEngineDb, SSODB. Record current SQL instance name, service accounts, SQL Agent jobs, linked servers, logins, DTC configuration, collation, and database sizes. This inventory is the direct source of truth for populating SampleUpdateInfo.xml. Missing any database here will cause BizTalk to start in a degraded or faulted state after cutover.
- 3: Populate SampleUpdateInfo.xml (located in the BizTalk Server installation ConfigFramework folder) with the new target SQL server name for each BizTalk database. Dry-run UpdateDatabase.vbs against a copy of BizTalkMgmtDb in a test environment to confirm syntax. Define and document rollback: restore BizTalkMgmtDb from pre-cutover backup, revert SampleUpdateInfo.xml, re-execute UpdateDatabase.vbs with original values, restart BizTalk host instances. Rollback must be executable in under 30 minutes to fit the outage window constraint.
- 4: Develop and test: T-SQL backup/restore scripts for all BizTalk databases, PowerShell to stop and start BizTalk host instances and receive locations, UpdateDatabase.vbs execution wrapper with step-level logging, SQL Agent job migration script using sp_help_job and sp_add_job, and login synchronization script using sp_help_revlogin. Execute full end-to-end rehearsal in non-production. Stopwatch each step. Total rehearsed cutover time must fit within the approved maintenance window plus a 20% buffer. Any step exceeding expected time triggers a script optimization cycle.
- 5: Submit Change Advisory Board record with: maintenance window start/end, outage scope covering all BizTalk-dependent integrations, rollback plan with decision criteria, rehearsal timing evidence, and required approver list. Send business outage notification to impacted stakeholders at least 5 business days before cutover. Freeze all BizTalk application deployments. Pre-stage cutover scripts and runbook on the designated jump server. Confirm DBA and BizTalk admin on-call roster. Validate target SQL server has passed pre-migration health checks: disk space, memory, correct collation, DTC reachability, and SQL Agent service running.
- 6: Maintenance window execution sequence: (1) Disable all BizTalk receive locations and stop all host instances via BizTalk Admin Console or PowerShell. (2) Take final tail-log backup of BizTalkMsgBoxDb and all BizTalk databases on source SQL. (3) Restore all databases to target SQL — NORECOVERY for log chains, RECOVERY for final restore. (4) Synchronize SQL logins via sp_help_revlogin, migrate SQL Agent jobs, replicate DTC configuration. (5) Update SampleUpdateInfo.xml with target server name and run UpdateDatabase.vbs from the BizTalk ConfigFramework folder to repoint BizTalkMgmtDb. (6) Start BizTalk host instances and re-enable receive locations. (7) Process one live test message through each critical endpoint before declaring cutover success and closing the maintenance window.
- 7: Validate post-cutover health: all BizTalk host instances running against target SQL, suspended message count at or below pre-migration baseline, BAM portal showing live tracking data, SQL Agent jobs executing on their normal schedule on target SQL, DTC connectivity confirmed between all BizTalk servers and target SQL, backup jobs updated and running against new SQL instance. Monitor for 72 hours minimum. Maintain rollback capability until hypercare formally closes. Require written sign-off from BizTalk lead and integration business owners before closing the CAB change record.
- 8: Migration complete milestone. All BizTalk databases operational on target SQL server. Hypercare closed with written sign-off. Schedule decommission of source SQL instance databases after 30-day retention period per backup retention policy. Update CMDB with new SQL server inventory entries.
