# BizTalk SQL Migration Execution - 2 Servers

Schedule from MS Project XML, 2026-06-15 to 2026-07-09.

## Calendars

- Standard: Mon-Fri 08:00-12:00, 13:00-17:00; Sat-Sun off.

## Schedule

| ID | WBS | Task | Type | Duration | Start | Finish | Predecessors | Work |
| --- | --- | --- | --- | --- | --- | --- | --- | --- |
| 1 | 1 | **Two SQL Servers (SQL-A Admin+BAM, SQL-B MsgBox+DTA)** |  | 18.5d | 2026-06-15 | 2026-07-09 |  | 148h |
| 2 | 1.1 | Discover inventory and map DB placement |  | 3d | 2026-06-15 | 2026-06-17 |  | 24h |
| 3 | 1.2 | Design shared login and SQL Agent job package |  | 2d | 2026-06-18 | 2026-06-19 | 2 | 16h |
| 4 | 1.3 | Build shared automation artifacts |  | 3d | 2026-06-22 | 2026-06-24 | 3 | 24h |
| 5 | 1.4 | Rehearsal with parallel restore streams |  | 4d | 2026-06-25 | 2026-06-30 | 4 | 32h |
| 6 | 1.5 | CAB readiness and maintenance freeze prep |  | 2d | 2026-07-01 | 2026-07-02 | 5 | 16h |
| 7 | 1.6 | Cutover: parallel restores plus ConfigFramework repoint |  | 1.5d | 2026-07-03 | 2026-07-06 | 6 | 12h |
| 8 | 1.7 | Post-cutover validation and hypercare |  | 3d | 2026-07-06 | 2026-07-08 | 7 | 24h |
| 9 | 1.8 | Execution complete | milestone | 0d | 2026-07-09 | 2026-07-09 | 8 |  |

Notes:
- 1: Two-server split: SQL-A hosts BizTalkMgmtDb, SSODB, BAMPrimaryImport, BAMArchive, BAMStarSchema, BAMAlertsApplication, BAMAlertsNSMain, BizTalkRuleEngineDb. SQL-B hosts BizTalkMsgBoxDb and BizTalkDTADb. Restores run in parallel on both servers simultaneously. ConfigFramework SampleUpdateInfo.xml must reference both SQL-A and SQL-B server names. Shared logins and SQL Agent jobs must be provisioned on both instances before cutover. Parallel restores reduce the maintenance window compared to a single-server sequential migration.
- 2: Catalog all BizTalk databases and assign each to the target SQL server: SQL-A (Admin/BAM group) or SQL-B (runtime group). Document current instance names, service accounts, SQL Agent jobs per instance, cross-instance linked servers, DTC configuration, collation, logins, and database sizes. The two-server split requires careful documentation of which logins must exist on both instances (BizTalk service accounts, BizTalk host accounts) versus only one. This mapping directly drives the two-entry SampleUpdateInfo.xml.
- 3: BizTalk service accounts, host instance accounts, and SSO service accounts must exist as logins on BOTH SQL-A and SQL-B. Design a login deployment script using sp_help_revlogin that applies consistently to both target instances. Map each SQL Agent job to its owning database and target server: Backup BizTalk Server runs on SQL-A (owns BizTalkMgmtDb), MessageBox-dependent jobs run on SQL-B. Design SampleUpdateInfo.xml with separate entries for SQL-A and SQL-B server names. Incorrect login scope is the most common cause of BizTalk host instance startup failure in a multi-server migration.
- 4: Build parameterized backup/restore scripts that target SQL-A and SQL-B independently and can run in parallel from separate PowerShell sessions or a coordinator script. Build login deployment script applicable to both instances. Build SQL Agent job migration scripts per target server. Build the two-server SampleUpdateInfo.xml and test UpdateDatabase.vbs against a non-prod BizTalkMgmtDb copy. All artifacts must be idempotent — re-runnable without causing errors in a rollback scenario.
- 5: Execute full non-production rehearsal with genuine parallel restore streams: one operator/session handles SQL-A databases while a second handles SQL-B simultaneously. Validate that parallel I/O does not saturate network or storage bandwidth on either target server. Confirm both servers complete their restore phase within the same time window before the repoint step begins — BizTalk must not be repointed until ALL databases on both servers are recovered. Stopwatch each phase. Adjust script parallelism if SQL-A and SQL-B complete at significantly different times.
- 6: Submit CAB record with parallel-restore timing evidence from rehearsal, two-server rollback plan, and DBA on-call roster covering both SQL-A and SQL-B. The rollback plan for a two-server migration must account for partial failure: if SQL-A restores succeed but SQL-B fails, BizTalk cannot be started in any state — full rollback is required. Ensure two separate DBA resources are on-call for cutover night, one per target server. Pre-stage scripts on the jump server. Freeze BizTalk application deployments. Confirm DTC reachability from BizTalk servers to both SQL-A and SQL-B.
- 7: Maintenance window execution sequence: (1) Disable all BizTalk receive locations and stop all host instances. (2) Take final tail-log backups of all BizTalk databases on source SQL. (3) Launch parallel restore sessions — DBA-A restores SQL-A databases, DBA-B restores SQL-B databases simultaneously. (4) WAIT for both restore streams to complete WITH RECOVERY before proceeding. (5) Apply logins to SQL-A and SQL-B. Migrate SQL Agent jobs to owning server. (6) Update SampleUpdateInfo.xml with both SQL-A and SQL-B server names. Run UpdateDatabase.vbs. (7) Start BizTalk host instances and re-enable receive locations. (8) Validate message flow on each integration endpoint.
- 8: Validate health across both SQL servers: all host instances connecting to both SQL-A and SQL-B, suspended message count at baseline, BAM portal showing live data from SQL-A, SQL Agent jobs running on their respective target servers, DTC connectivity confirmed from BizTalk servers to both SQL-A and SQL-B independently, backup jobs updated for both instances. Monitor for 72 hours. The two-server topology doubles the monitoring surface — ensure alerting covers both SQL instances. Require sign-off from BizTalk lead, DBA lead, and integration business owners before closing.
- 9: Migration complete. Both SQL-A and SQL-B operational with BizTalk databases. Hypercare closed with written sign-off. Schedule decommission of source SQL instance databases after 30-day retention. Update CMDB with new two-server inventory records for both SQL-A and SQL-B.
