# BizTalk SQL Migration Execution - 3 Servers

Schedule from MS Project XML, 2026-07-27 to 2026-08-18.

## Calendars

- Standard: Mon-Fri 08:00-12:00, 13:00-17:00; Sat-Sun off.

## Schedule

| ID | WBS | Task | Type | Duration | Start | Finish | Predecessors | Work |
| --- | --- | --- | --- | --- | --- | --- | --- | --- |
| 1 | 1 | **Three SQL Servers (SQL-A MsgBox, SQL-B DTA, SQL-C Admin+BAM)** |  | 16d | 2026-07-27 | 2026-08-18 |  | 128h |
| 2 | 1.1 | Discover inventory and role mapping |  | 3d | 2026-07-27 | 2026-07-29 |  | 24h |
| 3 | 1.2 | Design shared automation and restore lanes |  | 2d | 2026-07-30 | 2026-07-31 | 2 | 16h |
| 4 | 1.3 | Build and validate reusable scripts |  | 3d | 2026-08-03 | 2026-08-05 | 3 | 24h |
| 5 | 1.4 | Rehearsal with three-way parallel restore |  | 3d | 2026-08-06 | 2026-08-10 | 4 | 24h |
| 6 | 1.5 | CAB readiness and maintenance freeze prep |  | 2d | 2026-08-11 | 2026-08-12 | 5 | 16h |
| 7 | 1.6 | Cutover: parallel restore on 3 servers plus repoint |  | 1d | 2026-08-13 | 2026-08-13 | 6 | 8h |
| 8 | 1.7 | Post-cutover validation and hypercare |  | 2d | 2026-08-14 | 2026-08-17 | 7 | 16h |
| 9 | 1.8 | Execution complete | milestone | 0d | 2026-08-18 | 2026-08-18 | 8 |  |

Notes:
- 1: Three-server split: SQL-A hosts BizTalkMsgBoxDb (highest I/O, isolated for performance). SQL-B hosts BizTalkDTADb (tracking, isolated to prevent DTA archiving from impacting MsgBox). SQL-C hosts BizTalkMgmtDb, SSODB, BizTalkRuleEngineDb, BAMPrimaryImport, BAMArchive, BAMStarSchema, BAMAlertsApplication, BAMAlertsNSMain. Three parallel restore lanes during cutover produce the shortest maintenance window in the three-server model. SampleUpdateInfo.xml requires three separate server name entries. Logins must exist on all three instances.
- 2: Catalog all BizTalk databases and assign each to its target server role: SQL-A (MsgBox), SQL-B (DTA), SQL-C (Admin+BAM). Document current instance name, all service account logins, SQL Agent jobs and their owning databases, DTC configuration per host, linked server definitions, collation settings, and database sizes. The MsgBox isolation on SQL-A is a performance and availability design decision — document the justification for the CAB record. All three target servers must be reachable from all BizTalk servers via DTC before cutover begins.
- 3: Design three independent restore lanes: Lane-A (SQL-A: MsgBox), Lane-B (SQL-B: DTA), Lane-C (SQL-C: Admin+BAM). Each lane is an independent script set that can run from its own PowerShell session or remote execution agent. Design a coordinator gate: the repoint step must not begin until all three lanes signal completion. Populate SampleUpdateInfo.xml with three server name entries. Design login deployment to run against all three servers. Assign SQL Agent job ownership: Backup BizTalk Server runs on SQL-C, MessageBox housekeeping jobs run on SQL-A.
- 4: Build Lane-A, Lane-B, and Lane-C restore scripts as independent, parameterized units. Build a shared pre-flight script that validates all three target servers are reachable, logins are provisioned, and disk space is sufficient before any restore begins. Build and test the three-entry SampleUpdateInfo.xml. Build a coordinator script that launches all three lanes in parallel background jobs and waits for all to complete before triggering the ConfigFramework repoint. All scripts must produce timestamped logs for post-mortem and audit evidence.
- 5: Execute non-production rehearsal with all three restore lanes running simultaneously. Assign one operator per lane (or use the coordinator script). Record per-lane completion times: the slowest lane determines the total restore phase window. Validate that the coordinator gate correctly blocks the repoint step until all three lanes complete. Verify logins, SQL Agent jobs, and DTC on all three target servers post-rehearsal. Run the full BizTalk start sequence and send test messages. The three-way parallel restore should produce a significantly shorter maintenance window than sequential single-server restore.
- 6: Submit CAB record with three-server topology diagram, per-lane rehearsal timing, three-server rollback plan, and three-DBA on-call roster. The rollback plan must address: if SQL-A lane fails but SQL-B and SQL-C succeed, the only safe state is full rollback — BizTalk cannot operate with a partial database split. Confirm three DBAs are on-call for cutover, one per target server. Pre-stage all three lane scripts and the coordinator on the jump server. Confirm DTC reachability from every BizTalk server to each of the three SQL servers independently.
- 7: Maintenance window execution sequence: (1) Disable all receive locations and stop all BizTalk host instances. (2) Take final tail-log backups on source SQL. (3) Launch coordinator script — three restore lanes run in parallel: Lane-A restores BizTalkMsgBoxDb to SQL-A, Lane-B restores BizTalkDTADb to SQL-B, Lane-C restores Admin/BAM databases to SQL-C. (4) Coordinator blocks until all three lanes complete WITH RECOVERY. (5) Apply logins to all three servers. Deploy SQL Agent jobs to owning servers. (6) Update SampleUpdateInfo.xml (three entries) and run UpdateDatabase.vbs. (7) Start host instances, re-enable receive locations. (8) Process test messages. The three-way parallel restore compresses the maintenance window to approximately 8 hours because restore I/O is fully distributed.
- 8: Validate health across all three SQL servers: BizTalk host instances connecting to SQL-A (MsgBox), SQL-B (DTA), and SQL-C (Admin/BAM). Verify suspended message count at baseline, BAM tracking live on SQL-C, SQL Agent jobs running on their owning servers, DTC connectivity verified from BizTalk to each SQL server independently, and backup jobs updated on all three instances. Monitor for 72 hours. Three-server monitoring surface triples the number of connection health checks to configure in your monitoring platform. Require sign-off from BizTalk, DBA, and business integration leads before closing.
- 9: Migration complete. SQL-A (MsgBox), SQL-B (DTA), and SQL-C (Admin+BAM) all operational. Hypercare closed with written sign-off. Schedule decommission of source SQL instance after 30-day retention. Update CMDB with three new SQL server entries and updated database placement records.
