# BizTalk SQL Migration Execution - 4 Servers

Schedule from MS Project XML, 2026-09-07 to 2026-09-29.

## Calendars

- Standard: Mon-Fri 08:00-12:00, 13:00-17:00; Sat-Sun off.

## Schedule

| ID | WBS | Task | Type | Duration | Start | Finish | Predecessors | Work |
| --- | --- | --- | --- | --- | --- | --- | --- | --- |
| 1 | 1 | **Four SQL Servers (SQL-A MsgBox, SQL-B DTA, SQL-C Admin, SQL-D BAM)** |  | 16d | 2026-09-07 | 2026-09-29 |  | 128h |
| 2 | 1.1 | Discover inventory and role mapping |  | 3d | 2026-09-07 | 2026-09-09 |  | 24h |
| 3 | 1.2 | Design shared artifact set for all servers |  | 2d | 2026-09-10 | 2026-09-11 | 2 | 16h |
| 4 | 1.3 | Build and validate reusable scripts and XML packages |  | 3d | 2026-09-14 | 2026-09-16 | 3 | 24h |
| 5 | 1.4 | Rehearsal with four-way parallel restore |  | 3d | 2026-09-17 | 2026-09-21 | 4 | 24h |
| 6 | 1.5 | CAB readiness and maintenance freeze prep |  | 2d | 2026-09-22 | 2026-09-23 | 5 | 16h |
| 7 | 1.6 | Cutover: four-way parallel restore plus repoint |  | 1d | 2026-09-24 | 2026-09-24 | 6 | 8h |
| 8 | 1.7 | Post-cutover validation and hypercare |  | 2d | 2026-09-25 | 2026-09-28 | 7 | 16h |
| 9 | 1.8 | Execution complete | milestone | 0d | 2026-09-29 | 2026-09-29 | 8 |  |

Notes:
- 1: Maximum isolation topology: SQL-A hosts BizTalkMsgBoxDb only (highest I/O workload, fully isolated). SQL-B hosts BizTalkDTADb only (tracking archiving isolated from runtime). SQL-C hosts BizTalkMgmtDb, SSODB, BizTalkRuleEngineDb (Admin databases). SQL-D hosts BAMPrimaryImport, BAMArchive, BAMStarSchema, BAMAlertsApplication, BAMAlertsNSMain (BAM fully isolated). SampleUpdateInfo.xml requires four separate server name entries — one per database group. BizTalk service account logins must exist on all four SQL instances. Four parallel restore lanes during cutover produces the shortest possible maintenance window — restore I/O is distributed across four independent servers.
- 2: Catalog all BizTalk databases and assign to target roles: SQL-A (MsgBox), SQL-B (DTA), SQL-C (Admin: MgmtDb, SSODB, RuleEngineDb), SQL-D (BAM: BAMPrimaryImport, BAMArchive, BAMStarSchema, BAMAlertsApplication, BAMAlertsNSMain). Document current instance name, all service account logins, SQL Agent jobs grouped by owning database, DTC configuration, linked server definitions, collation, and database sizes on all four target servers. The four-server topology is the most complex inventory — each server must be individually verified for disk space, memory, correct SQL collation (Latin1_General_CI_AS for BAM databases), and DTC configuration before proceeding.
- 3: Populate SampleUpdateInfo.xml with four separate database-to-server mappings — one entry per server group. Each entry maps the database name to the target server and instance. Design login deployment to apply BizTalk service accounts, host instance accounts, and SSO accounts to all four SQL instances. Map SQL Agent jobs to their owning server: Backup BizTalk Server runs on SQL-C (owns MgmtDb), MsgBox housekeeping jobs run on SQL-A, BAM maintenance jobs run on SQL-D. Design a four-lane coordinator script with a completion gate before the ConfigFramework repoint step executes. Define the rollback decision matrix: failure on any single lane requires full rollback.
- 4: Build four independent, parameterized restore lane scripts — Lane-A (SQL-A: MsgBox), Lane-B (SQL-B: DTA), Lane-C (SQL-C: Admin), Lane-D (SQL-D: BAM). Build a shared pre-flight validation script that checks all four target servers for reachability, disk space, login provisioning, and DTC configuration before any restore begins. Build the four-entry SampleUpdateInfo.xml and test UpdateDatabase.vbs in non-production. Build the four-lane coordinator script using PowerShell background jobs (Start-Job / Wait-Job) to launch all four lanes in parallel and gate the repoint step on all four completing WITH RECOVERY. All scripts must produce timestamped, per-lane logs.
- 5: Execute full non-production rehearsal with the four-lane coordinator script running all restore lanes simultaneously. Record per-lane start and completion times — the slowest lane (expected: SQL-A MsgBox due to size) sets the total restore phase window. Validate that the coordinator gate blocks the ConfigFramework repoint until all four lanes complete. Run the full BizTalk start sequence post-restore: start host instances, re-enable receive locations, send test messages through each integration endpoint. Verify logins, SQL Agent jobs, and DTC across all four target servers independently. Total rehearsed window should be 8 hours or less. If any lane exceeds targets, optimize its restore parallelism settings (FILE= clauses in RESTORE DATABASE).
- 6: Submit CAB record with four-server topology diagram, per-lane rehearsal timing evidence, four-server rollback plan, and four-DBA on-call roster. The rollback plan must be explicit: if any single lane fails after restores begin on other lanes, the only safe outcome is full rollback — BizTalk cannot operate when its database split is incomplete. Confirm four DBAs are on-call for cutover night, one per target server. Pre-stage coordinator script, all four lane scripts, and runbook on the jump server. Freeze BizTalk application deployments. Confirm DTC is reachable from every BizTalk server to each of the four SQL servers independently before the maintenance window opens.
- 7: Maintenance window execution sequence: (1) Disable all BizTalk receive locations and stop all host instances. (2) Take final tail-log backups of all BizTalk databases on source SQL. (3) Launch coordinator script — four restore lanes run in parallel: Lane-A restores BizTalkMsgBoxDb to SQL-A, Lane-B restores BizTalkDTADb to SQL-B, Lane-C restores Admin databases to SQL-C, Lane-D restores BAM databases to SQL-D. (4) Coordinator uses Wait-Job to block until all four lanes complete WITH RECOVERY — do not proceed if any lane fails. (5) Apply logins to all four servers simultaneously. Deploy SQL Agent jobs to their owning servers. (6) Update SampleUpdateInfo.xml with all four server names (four separate database-to-server entries) and execute UpdateDatabase.vbs from the BizTalk ConfigFramework folder. (7) Start host instances, re-enable receive locations. (8) Validate test messages across all critical integration endpoints before closing the maintenance window.
- 8: Validate health across all four SQL servers: BizTalk host instances connecting to SQL-A (MsgBox), SQL-B (DTA), SQL-C (Admin), and SQL-D (BAM). Verify suspended message count at baseline, BAM portal tracking data live from SQL-D, BizTalk Admin Console connected to SQL-C (MgmtDb), SQL Agent jobs executing on their owning servers on schedule, DTC connectivity independently verified from all BizTalk servers to each of the four SQL servers, backup jobs updated and running for all four instances. Monitor for 72 hours minimum. Configure monitoring alerts for all four SQL servers before closing hypercare. Require written sign-off from BizTalk lead, DBA lead, BAM/reporting lead, and integration business owners before closing the CAB change record.
- 9: Migration complete. SQL-A (MsgBox), SQL-B (DTA), SQL-C (Admin), and SQL-D (BAM) all operational. Hypercare closed with written sign-off from all required stakeholders. Schedule decommission of source SQL instance databases after 30-day retention period. Update CMDB with four new SQL server entries and updated database placement records for all BizTalk databases.
